# BodegaTridisarV2

Schedule from MS Project, 2020-09-01 to 2020-12-09, costs in $.

## Calendars

- CalBodega: Mon-Fri 08:00-12:00, 14:00-18:00; Sat-Sun off.

## Resources

| Resource | Group | Rate |
| --- | --- | --- |
| GERENTE DEL PROYECTO | Administrativo | 40599 |
| INGENIERO ANALISTA | Operativo | 35185 |
| INGENIERO DE PRUEBAS | operativo | 15500 |
| DISEÑADOR WEB | operativo | 12800 |
| DESARROLLADOR SENIOR | operativo | 25700 |
| ARQUITECTO DE SOFTWARE | operativo | 38900 |
| DESARROLLADOR WEB SENIOR | operativo | 19700 |
| INGENIERO ANALISTA 2 | operativo | 12590 |
| DOCUMENTADOR | operativo | 10500 |
| SERVICIO DE LUZ |  |  |
| PROFESIONAL CAPACITACION | operativo |  |

## Schedule

| ID | WBS | Task | Duration | Start | Finish | Predecessors | Total slack | Free slack | Resources | Work | Cost |
| --- | --- | --- | --- | --- | --- | --- | --- | --- | --- | --- | --- |
| 1 | 1 | **Aplicativo web para la gestión de las ventas y control de inventario de la bodega TRIDISAR** | 72d? | 2020-09-01 | 2020-12-09 |  | 0d |  |  | 1064h | 23,673,952 |
| 2 | 1.1 | **E1. Un (1) Aplicativo web para la administración de las ventas y control inventario de la bodega TRIDISAR** | 57d? | 2020-09-01 | 2020-11-18 |  | 0d |  |  | 856h | 20,254,784 |
| 3 | 1.1.1 | **SE1. Modulo administrador** | 36d? | 2020-09-01 | 2020-10-20 |  | 0d |  |  | 512h | 12,262,032 |
| 4 | 1.1.1.1 | **Analisis** | 4d? | 2020-09-01 | 2020-09-04 |  | 0d |  |  | 88h | 2,034,592 |
| 5 | 1.1.1.1.1 | Agendar reunión con el stakeholder | 1d? | 2020-09-01 | 2020-09-01 |  | 0d |  | GERENTE DEL PROYECTO | 8h | 324,792 |
| 6 | 1.1.1.1.2 | Realizar toma de requerimientos | 1d? | 2020-09-01 | 2020-09-01 |  | 1d | 0d | INGENIERO ANALISTA; INGENIERO ANALISTA 2 | 16h | 382,200 |
| 7 | 1.1.1.1.3 | Revisar y validar los requerimientos | 1d? | 2020-09-02 | 2020-09-02 | 5 | 0d |  | ARQUITECTO DE SOFTWARE; INGENIERO ANALISTA 2 | 16h | 411,920 |
| 8 | 1.1.1.1.4 | Documento de requerimientos funcionales | 1d? | 2020-09-02 | 2020-09-02 | 6 | 1d | 0d | DOCUMENTADOR; INGENIERO ANALISTA | 16h | 365,480 |
| 9 | 1.1.1.1.5 | Acta de aprobacion de los requerimientos funcionales | 1d? | 2020-09-03 | 2020-09-03 | 7 | 0d |  | DOCUMENTADOR; INGENIERO ANALISTA | 16h | 365,480 |
| 10 | 1.1.1.1.6 | Elaborar el documento de la fase de análisis | 1d? | 2020-09-03 | 2020-09-03 | 8 | 1d |  | INGENIERO ANALISTA 2 | 8h | 100,720 |
| 11 | 1.1.1.1.7 | Entrega del documento de la fase de análisis | 1d? | 2020-09-04 | 2020-09-04 | 9 | 0d |  | DOCUMENTADOR | 8h | 84,000 |
| 12 | 1.1.1.2 | **Diseño** | 11d? | 2020-09-07 | 2020-09-21 | 4 | 0d |  |  | 152h | 4,687,656 |
| 13 | 1.1.1.2.1 | Agendar reunión con el stakeholder | 1d | 2020-09-07 | 2020-09-07 | 9 | 0d |  | GERENTE DEL PROYECTO | 8h | 324,792 |
| 14 | 1.1.1.2.2 | Definir arquitectura del software | 2d | 2020-09-08 | 2020-09-09 | 13 | 0d |  | ARQUITECTO DE SOFTWARE | 16h | 622,400 |
| 15 | 1.1.1.2.3 | Definir Herramientas del desarrollo | 1d? | 2020-09-08 | 2020-09-08 | 14SS | 0d |  | DISEÑADOR WEB | 8h | 102,400 |
| 16 | 1.1.1.2.4 | Realizar el diseño del diagrama de clases | 2d | 2020-09-09 | 2020-09-10 | 15 | 0d |  | INGENIERO ANALISTA | 16h | 562,960 |
| 17 | 1.1.1.2.5 | Realizar el mapa de navegacion de la aplicación | 1d? | 2020-09-11 | 2020-09-11 | 16 | 0d |  | INGENIERO ANALISTA 2 | 8h | 100,720 |
| 18 | 1.1.1.2.6 | Diseñar mockups | 3d | 2020-09-14 | 2020-09-16 | 17 | 0d |  | ARQUITECTO DE SOFTWARE | 24h | 933,600 |
| 19 | 1.1.1.2.7 | Realizar el modelo de la base de datos | 2d | 2020-09-18 | 2020-09-21 | 20 | 0d |  | ARQUITECTO DE SOFTWARE | 16h | 622,400 |
| 20 | 1.1.1.2.8 | Validar mockups | 1d? | 2020-09-17 | 2020-09-17 | 18 | 0d |  | ARQUITECTO DE SOFTWARE; GERENTE DEL PROYECTO | 16h | 635,992 |
| 21 | 1.1.1.2.9 | Validar el modelo de la base de datos | 1d? | 2020-09-18 | 2020-09-18 | 20 | 1d |  | DESARROLLADOR SENIOR; GERENTE DEL PROYECTO | 16h | 530,392 |
| 22 | 1.1.1.2.10 | Realizar documento técnico Ingenieril fase diseño | 2d | 2020-09-17 | 2020-09-18 | 20SS | 0d |  | DOCUMENTADOR | 16h | 168,000 |
| 23 | 1.1.1.2.11 | Entrega del documento técnico ingenieril fase de diseño | 1d? | 2020-09-21 | 2020-09-21 | 22 | 0d |  | DOCUMENTADOR | 8h | 84,000 |
| 24 | 1.1.1.3 | **Desarrollo** | 18d? | 2020-09-22 | 2020-10-15 | 12 | 0d |  |  | 208h | 3,913,520 |
| 25 | 1.1.1.3.1 | Desarrollar el código fuente frontend de la interfaz de usuario basado en el inicio de sesion | 2d | 2020-09-22 | 2020-09-23 |  | 0d |  | DISEÑADOR WEB | 16h | 204,800 |
| 26 | 1.1.1.3.2 | Desarrollar el código fuente frontend de la interfaz inial de usuario administrador | 1d | 2020-09-24 | 2020-09-24 | 25 | 0d |  | DISEÑADOR WEB | 8h | 102,400 |
| 27 | 1.1.1.3.3 | Desarrollo del código fuente frontend de la interfaz inicial del usuario administrador | 2d | 2020-09-29 | 2020-09-30 | 28 | 11d |  | DISEÑADOR WEB | 16h | 204,800 |
| 28 | 1.1.1.3.4 | Desarrollo del código fuente backend de la historia de usuario inicio de sesion | 2d | 2020-09-25 | 2020-09-28 | 26 | 0d |  | DESARROLLADOR SENIOR; DESARROLLADOR WEB SENIOR | 32h | 726,400 |
| 29 | 1.1.1.3.5 | Realizar pruebas unitarias al código fuente de la historia de usuario inicio de sesion | 1d? | 2020-09-29 | 2020-09-29 | 28 | 0d |  | DESARROLLADOR SENIOR; INGENIERO DE PRUEBAS | 16h | 329,600 |
| 30 | 1.1.1.3.6 | Desarrollar el código fuente frontend de la interfaz de usuario basado en CRUD de vendedores | 1d | 2020-09-30 | 2020-09-30 | 29 | 0d |  | ARQUITECTO DE SOFTWARE | 8h | 311,200 |
| 31 | 1.1.1.3.7 | Desarrollo del código fuente backend de la historia de usuario CRUD de vendedores | 2d | 2020-10-01 | 2020-10-02 | 30 | 0d |  | DESARROLLADOR SENIOR; DESARROLLADOR WEB SENIOR | 32h | 726,400 |
| 32 | 1.1.1.3.8 | Realizar pruebas unitarias al código fuente de la historia de usuario CRUD de vendedores | 1d | 2020-10-05 | 2020-10-05 | 31 | 0d |  | INGENIERO DE PRUEBAS | 8h | 124,000 |
| 33 | 1.1.1.3.9 | Desarrollar el código fuente frontend de la interfaz de usuario basado en CRUD de proveedores | 1d | 2020-10-06 | 2020-10-06 | 32 | 0d |  | DISEÑADOR WEB | 8h | 102,400 |
| 34 | 1.1.1.3.10 | Desarrollo del código fuente backend de la historia de usuario CRUD de proveedores | 2d | 2020-10-07 | 2020-10-08 | 33 | 0d |  | DESARROLLADOR WEB SENIOR | 16h | 315,200 |
| 35 | 1.1.1.3.11 | Realizar pruebas unitarias al código fuente de la historia de usuario CRUD de proveedores | 1d | 2020-10-09 | 2020-10-09 | 34 | 0d |  | INGENIERO DE PRUEBAS | 8h | 124,000 |
| 36 | 1.1.1.3.12 | Desarrollar el código fuente frontend de la interfaz de usuario basado en CONTROL de inventario | 1d | 2020-10-12 | 2020-10-12 | 35 | 0d |  | DISEÑADOR WEB | 8h | 102,400 |
| 37 | 1.1.1.3.13 | Desarrollo del código fuente backend de la historia de usuario CONTROL de inventario | 2d | 2020-10-13 | 2020-10-14 | 36 | 0d |  | DESARROLLADOR WEB SENIOR | 16h | 315,200 |
| 38 | 1.1.1.3.14 | Realizar pruebas unitarias al código fuente de la historia de usuario CONTROL de inventario | 1d? | 2020-10-15 | 2020-10-15 | 37 | 0d |  | INGENIERO ANALISTA 2; INGENIERO DE PRUEBAS | 16h | 224,720 |

| ID | WBS | Task | Duration | Start | Finish | Predecessors | Total slack | Resources | Work | Cost |
| --- | --- | --- | --- | --- | --- | --- | --- | --- | --- | --- |
| 39 | 1.1.1.4 | **Pruebas** | 3d? | 2020-10-16 | 2020-10-20 | 24 | 0d |  | 64h | 1,626,264 |
| 40 | 1.1.1.4.1 | Agendar reuniones con el cliente sobre actividades en pruebas de funcionalidad | 1d? | 2020-10-16 | 2020-10-16 |  | 0d | GERENTE DEL PROYECTO | 8h | 324,792 |
| 41 | 1.1.1.4.2 | Realizar pruebas de aceptacion por el cliente | 1d? | 2020-10-19 | 2020-10-19 | 40 | 0d | INGENIERO ANALISTA; INGENIERO DE PRUEBAS | 16h | 405,480 |
| 42 | 1.1.1.4.3 | Realizar correcciones de acuerdo a los resultados obtenidos en las pruebas por el cliente | 1d? | 2020-10-19 | 2020-10-19 | 40 | 1d | DESARROLLADOR SENIOR; DESARROLLADOR WEB SENIOR | 16h | 363,200 |
| 43 | 1.1.1.4.4 | Elaborar un informe sobre los resultados obtenidos en las pruebas | 1d? | 2020-10-20 | 2020-10-20 | 41 | 0d | INGENIERO DE PRUEBAS; DOCUMENTADOR | 16h | 208,000 |
| 44 | 1.1.1.4.5 | Entregar el documento tecnico sobre los resultados de las pruebas al cliente | 1d? | 2020-10-20 | 2020-10-20 | 41 | 0d | GERENTE DEL PROYECTO | 8h | 324,792 |
| 45 | 1.1.2 | **SE2. Modulo vendedor** | 21d? | 2020-10-21 | 2020-11-18 | 3 | 0d |  | 344h | 7,992,752 |
| 46 | 1.1.2.1 | **Analisis** | 3d? | 2020-10-21 | 2020-10-23 |  | 0d |  | 64h | 1,341,192 |
| 47 | 1.1.2.1.1 | Agendar reunión con el stakeholder | 1d | 2020-10-21 | 2020-10-21 |  | 0d | GERENTE DEL PROYECTO | 8h | 324,792 |
| 48 | 1.1.2.1.2 | Elaborar el documento de la fase de análisis del modulo de vendedor | 2d | 2020-10-21 | 2020-10-22 | 47SS | 0d | DOCUMENTADOR; INGENIERO ANALISTA; INGENIERO ANALISTA 2 | 48h | 932,400 |
| 49 | 1.1.2.1.3 | Entrega del documento de la fase de análisis del modulo vendedor | 1d? | 2020-10-23 | 2020-10-23 | 48 | 0d | DOCUMENTADOR | 8h | 84,000 |
| 50 | 1.1.2.2 | **Diseño** | 5d? | 2020-10-26 | 2020-10-30 | 46 | 0d |  | 88h | 2,306,784 |
| 51 | 1.1.2.2.1 | Agendar reunión con el stakeholder | 1d? | 2020-10-26 | 2020-10-26 |  | 0d | GERENTE DEL PROYECTO | 8h | 324,792 |
| 52 | 1.1.2.2.2 | Realizar el mapa de navegacion de la aplicación | 1d? | 2020-10-26 | 2020-10-26 | 51SS | 0d | DISEÑADOR WEB; INGENIERO ANALISTA | 16h | 383,880 |
| 53 | 1.1.2.2.3 | Diseñar mockups del modulo de usuario | 1d? | 2020-10-27 | 2020-10-27 | 52 | 0d | ARQUITECTO DE SOFTWARE; INGENIERO ANALISTA | 16h | 592,680 |
| 54 | 1.1.2.2.4 | Validacion de los mockups | 1d? | 2020-10-28 | 2020-10-28 | 53 | 0d | GERENTE DEL PROYECTO; INGENIERO ANALISTA 2 | 16h | 425,512 |
| 55 | 1.1.2.2.5 | Realizar documento técnico Ingenieril fase diseño | 1d? | 2020-10-29 | 2020-10-29 | 54 | 0d | DOCUMENTADOR; INGENIERO ANALISTA 2 | 16h | 184,720 |
| 56 | 1.1.2.2.6 | Entrega del documento técnico ingenieril fase de diseño del modulo de reporte | 1d? | 2020-10-30 | 2020-10-30 | 55 | 0d | ARQUITECTO DE SOFTWARE; DOCUMENTADOR | 16h | 395,200 |
| 57 | 1.1.2.3 | **Desarrollo** | 9d? | 2020-11-02 | 2020-11-12 | 50 | 0d |  | 128h | 2,675,200 |
| 58 | 1.1.2.3.1 | Desarrollar el código fuente frontend de la interfaz de usuario basado en CRUD de clientes | 1d? | 2020-11-02 | 2020-11-02 |  | 0d | ARQUITECTO DE SOFTWARE; DISEÑADOR WEB | 16h | 413,600 |
| 59 | 1.1.2.3.2 | Desarrollo del código fuente backend de la historia de usuario CRUD de clientes | 2d | 2020-11-03 | 2020-11-04 | 58 | 0d | DESARROLLADOR SENIOR | 16h | 411,200 |
| 60 | 1.1.2.3.3 | Realizar pruebas unitarias al código fuente de la historia de usuario CRUD de clientes | 1d? | 2020-11-05 | 2020-11-05 | 59 | 0d | DISEÑADOR WEB; INGENIERO DE PRUEBAS | 16h | 226,400 |
| 61 | 1.1.2.3.4 | Desarrollar el código fuente frontend de la interfaz de usuario basado en SECCION de ventas | 1d? | 2020-11-06 | 2020-11-06 | 60 | 0d | DESARROLLADOR SENIOR; DISEÑADOR WEB | 16h | 308,000 |
| 62 | 1.1.2.3.5 | Desarrollo del código fuente backend de la historia de usuario SECCION de ventas | 2d | 2020-11-09 | 2020-11-10 | 61 | 0d | DESARROLLADOR SENIOR; DESARROLLADOR WEB SENIOR | 32h | 726,400 |
| 63 | 1.1.2.3.6 | Realizar pruebas unitarias al código fuente de la historia de usuario de SECCION de ventas | 1d? | 2020-11-11 | 2020-11-11 | 62 | 0d | DISEÑADOR WEB; INGENIERO DE PRUEBAS | 16h | 226,400 |
| 64 | 1.1.2.3.7 | Entregar codigo fuente | 1d? | 2020-11-12 | 2020-11-12 | 63 | 0d | DESARROLLADOR SENIOR; DESARROLLADOR WEB SENIOR | 16h | 363,200 |

| ID | WBS | Task | Duration | Start | Finish | Predecessors | Total slack | Resources | Work | Cost |
| --- | --- | --- | --- | --- | --- | --- | --- | --- | --- | --- |
| 65 | 1.1.2.4 | **Pruebas** | 4d? | 2020-11-13 | 2020-11-18 | 57 | 0d |  | 64h | 1,669,576 |
| 66 | 1.1.2.4.1 | Agendar reuniones con el cliente sobre actividades en pruebas de funcionalidad | 1d? | 2020-11-13 | 2020-11-13 |  | 0d | GERENTE DEL PROYECTO | 8h | 324,792 |
| 67 | 1.1.2.4.2 | Realizar pruebas de aceptacion por el cliente | 1d? | 2020-11-16 | 2020-11-16 | 66 | 0d | GERENTE DEL PROYECTO; INGENIERO DE PRUEBAS | 16h | 448,792 |
| 68 | 1.1.2.4.3 | Realizar correcciones de acuerdo a los resultados obtenidos en las pruebas por el cliente | 1d? | 2020-11-17 | 2020-11-17 | 67 | 0d | DESARROLLADOR SENIOR; DESARROLLADOR WEB SENIOR | 16h | 363,200 |
| 69 | 1.1.2.4.4 | Elaborar un informe sobre los resultados obtenidos en las pruebas | 1d? | 2020-11-18 | 2020-11-18 | 68 | 0d | DOCUMENTADOR; INGENIERO DE PRUEBAS | 16h | 208,000 |
| 70 | 1.1.2.4.5 | Entregar el documento tecnico sobre los resultados de las pruebas al cliente | 1d? | 2020-11-18 | 2020-11-18 | 69SS | 0d | GERENTE DEL PROYECTO | 8h | 324,792 |
| 71 | 1.2 | **E2. Un (1) Aplicativo web implementado en un servidor hosting Aplicativo web para la administración de las ventas y control inventario de la bodega TRIDISAR** | 5d? | 2020-11-19 | 2020-11-25 | 2 | 0d |  | 48h | 1,127,192 |
| 72 | 1.2.1 | Planificar reunion para planificar el proceso de entrega del hosting y el dominio | 1d? | 2020-11-19 | 2020-11-19 |  | 0d | GERENTE DEL PROYECTO | 8h | 324,792 |
| 73 | 1.2.2 | Configuracion del hosting y dominio | 2d | 2020-11-20 | 2020-11-23 | 72 | 0d | DESARROLLADOR WEB SENIOR | 16h | 315,200 |
| 74 | 1.2.3 | Subida del aplicativo web al hosting | 1d? | 2020-11-24 | 2020-11-24 | 73 | 0d | DESARROLLADOR SENIOR; DESARROLLADOR WEB SENIOR | 16h | 363,200 |
| 75 | 1.2.4 | Realizacion de pruebas para el correcto funcionamiento del aplicativo en el hosting | 1d? | 2020-11-25 | 2020-11-25 | 74 | 0d | INGENIERO DE PRUEBAS | 8h | 124,000 |
| 76 | 1.3 | **E3.Tres (3) personas capacitadas en el manejo de la plataforma web durante dos (2) horas diarias por tres (3) dias** | 10d? | 2020-11-26 | 2020-12-09 | 71 | 0d |  | 160h | 2,291,976 |
| 77 | 1.3.1 | Preparacion de la capacitación | 3d | 2020-11-26 | 2020-11-30 |  | 0d | GERENTE DEL PROYECTO; PROFESIONAL CAPACITACION | 48h | 974,376 |
| 78 | 1.3.2 | Diseño de la capacitacion | 2d | 2020-12-01 | 2020-12-02 | 77 | 0d | DESARROLLADOR SENIOR; PROFESIONAL CAPACITACION | 32h | 411,200 |
| 79 | 1.3.3 | Ejecutar la capacitacion | 4d | 2020-12-03 | 2020-12-08 | 78 | 0d | DESARROLLADOR SENIOR; PROFESIONAL CAPACITACION | 64h | 822,400 |
| 80 | 1.3.4 | Acta de validacion de la capacitacion | 1d? | 2020-12-09 | 2020-12-09 | 79 | 0d | DOCUMENTADOR; PROFESIONAL CAPACITACION | 16h | 84,000 |
