# BodegaTridisarV2

Schedule from MS Project, 2020-09-01 to 2020-12-09, status date 2020-12-04, costs in $, A marks actual dates.

## Calendars

- CalBodega: Mon-Fri 08:00-12:00, 14:00-18:00; Sat-Sun off.

## Resources

| Resource | Rate |
| --- | --- |
| GERENTE DEL PROYECTO | 40599 |
| INGENIERO ANALISTA | 35185 |
| GERENTE ADMINISTRATIVO | 25000 |
| INGENIERO DE PRUEBAS | 15500 |
| DISEÑADOR WEB | 12800 |
| DESARROLLADOR SENIOR | 25700 |
| ARQUITECTO DE SOFTWARE | 38900 |
| DESARROLLADOR WEB SENIOR | 19700 |
| INGENIERO ANALISTA 2 | 12590 |
| DOCUMENTADOR | 10500 |
| SERVICIO DE LUZ |  |
| PROFESIONAL CAPACITACION |  |

## Schedule

| ID | WBS | Task | Duration | Start | Finish | Predecessors | Complete | Remaining | Baseline start | Baseline finish | Baseline duration | Total slack | Resources | Work | Actual work | Cost | Baseline cost | Actual cost |
| --- | --- | --- | --- | --- | --- | --- | --- | --- | --- | --- | --- | --- | --- | --- | --- | --- | --- | --- |
| 1 | 1 | **Aplicativo web para la gestión de las ventas y control de inventario de la bodega TRIDISAR** | 72d? | 2020-09-01 A | 2020-12-09 |  | 97% | 2.18d? | 2020-09-01 | 2020-12-09 | 72d? | 0d |  | 1224h | 1176h | 27,236,488 | 23,673,952 | 26,741,288 |
| 2 | 1.1 | **E1. Un (1) Aplicativo web para la administración de las ventas y control inventario de la bodega TRIDISAR** | 57d? | 2020-09-01 A | 2020-11-18 A |  | 100% |  | 2020-09-01 | 2020-11-18 | 57d? |  |  | 1016h | 1016h | 23,817,320 | 20,254,784 | 23,817,320 |
| 3 | 1.1.1 | **SE1. Modulo administrador** | 37d? | 2020-09-01 A | 2020-10-21 A |  | 100% |  | 2020-09-01 | 2020-10-20 | 36d? |  |  | 600h | 600h | 14,100,184 | 12,262,032 | 14,100,184 |
| 4 | 1.1.1.1 | **Analisis** | 4d? | 2020-09-01 A | 2020-09-04 A |  | 100% |  | 2020-09-01 | 2020-09-04 | 4d? |  |  | 112h | 112h | 2,724,864 | 2,034,592 | 2,724,864 |
| 5 | 1.1.1.1.1 | Agendar reunión con el stakeholder | 2d? | 2020-09-01 A | 2020-09-02 A |  | 100% |  | 2020-09-01 | 2020-09-01 | 1d? |  | GERENTE DEL PROYECTO | 16h | 16h | 649,584 | 324,792 | 649,584 |
| 6 | 1.1.1.1.2 | Realizar toma de requerimientos | 1d? | 2020-09-01 A | 2020-09-01 A |  | 100% |  | 2020-09-01 | 2020-09-01 | 1d? |  | INGENIERO ANALISTA; INGENIERO ANALISTA 2 | 16h | 16h | 382,200 | 382,200 | 382,200 |
| 7 | 1.1.1.1.3 | Revisar y validar los requerimientos | 1d? | 2020-09-02 A | 2020-09-02 A | 5 | 100% |  | 2020-09-02 | 2020-09-02 | 1d? |  | ARQUITECTO DE SOFTWARE; INGENIERO ANALISTA 2 | 16h | 16h | 411,920 | 411,920 | 411,920 |
| 8 | 1.1.1.1.4 | Documento de requerimientos funcionales | 2d? | 2020-09-02 A | 2020-09-03 A | 6 | 100% |  | 2020-09-02 | 2020-09-02 | 1d? |  | DOCUMENTADOR; INGENIERO ANALISTA | 32h | 32h | 730,960 | 365,480 | 730,960 |
| 9 | 1.1.1.1.5 | Acta de aprobacion de los requerimientos funcionales | 1d? | 2020-09-03 A | 2020-09-03 A | 7 | 100% |  | 2020-09-03 | 2020-09-03 | 1d? |  | DOCUMENTADOR; INGENIERO ANALISTA | 16h | 16h | 365,480 | 365,480 | 365,480 |
| 10 | 1.1.1.1.6 | Elaborar el documento de la fase de análisis | 1d? | 2020-09-03 A | 2020-09-03 A | 8 | 100% |  | 2020-09-03 | 2020-09-03 | 1d? |  | INGENIERO ANALISTA 2 | 8h | 8h | 100,720 | 100,720 | 100,720 |
| 11 | 1.1.1.1.7 | Entrega del documento de la fase de análisis | 1d? | 2020-09-04 A | 2020-09-04 A | 9 | 100% |  | 2020-09-04 | 2020-09-04 | 1d? |  | DOCUMENTADOR | 8h | 8h | 84,000 | 84,000 | 84,000 |
| 12 | 1.1.1.2 | **Diseño** | 11d? | 2020-09-07 A | 2020-09-21 A | 4 | 100% |  | 2020-09-07 | 2020-09-21 | 11d? |  |  | 152h | 152h | 4,687,656 | 4,687,656 | 4,687,656 |
| 13 | 1.1.1.2.1 | Agendar reunión con el stakeholder | 1d | 2020-09-07 A | 2020-09-07 A | 9 | 100% |  | 2020-09-07 | 2020-09-07 | 1d |  | GERENTE DEL PROYECTO | 8h | 8h | 324,792 | 324,792 | 324,792 |
| 14 | 1.1.1.2.2 | Definir arquitectura del software | 2d | 2020-09-08 A | 2020-09-09 A | 13 | 100% |  | 2020-09-08 | 2020-09-09 | 2d |  | ARQUITECTO DE SOFTWARE | 16h | 16h | 622,400 | 622,400 | 622,400 |
| 15 | 1.1.1.2.3 | Definir Herramientas del desarrollo | 1d? | 2020-09-08 A | 2020-09-08 A | 14SS | 100% |  | 2020-09-08 | 2020-09-08 | 1d? |  | DISEÑADOR WEB | 8h | 8h | 102,400 | 102,400 | 102,400 |
| 16 | 1.1.1.2.4 | Realizar el diseño del diagrama de clases | 2d | 2020-09-09 A | 2020-09-10 A | 15 | 100% |  | 2020-09-09 | 2020-09-10 | 2d |  | INGENIERO ANALISTA | 16h | 16h | 562,960 | 562,960 | 562,960 |
| 17 | 1.1.1.2.5 | Realizar el mapa de navegacion de la aplicación | 1d? | 2020-09-11 A | 2020-09-11 A | 16 | 100% |  | 2020-09-11 | 2020-09-11 | 1d? |  | INGENIERO ANALISTA 2 | 8h | 8h | 100,720 | 100,720 | 100,720 |
| 18 | 1.1.1.2.6 | Diseñar mockups | 3d | 2020-09-14 A | 2020-09-16 A | 17 | 100% |  | 2020-09-14 | 2020-09-16 | 3d |  | ARQUITECTO DE SOFTWARE | 24h | 24h | 933,600 | 933,600 | 933,600 |
| 19 | 1.1.1.2.7 | Realizar el modelo de la base de datos | 2d | 2020-09-18 A | 2020-09-21 A | 20 | 100% |  | 2020-09-18 | 2020-09-21 | 2d |  | ARQUITECTO DE SOFTWARE | 16h | 16h | 622,400 | 622,400 | 622,400 |
| 20 | 1.1.1.2.8 | Validar mockups | 1d? | 2020-09-17 A | 2020-09-17 A | 18 | 100% |  | 2020-09-17 | 2020-09-17 | 1d? |  | ARQUITECTO DE SOFTWARE; GERENTE DEL PROYECTO | 16h | 16h | 635,992 | 635,992 | 635,992 |
| 21 | 1.1.1.2.9 | Validar el modelo de la base de datos | 1d? | 2020-09-18 A | 2020-09-18 A | 20 | 100% |  | 2020-09-18 | 2020-09-18 | 1d? |  | DESARROLLADOR SENIOR; GERENTE DEL PROYECTO | 16h | 16h | 530,392 | 530,392 | 530,392 |
| 22 | 1.1.1.2.10 | Realizar documento técnico Ingenieril fase diseño | 2d | 2020-09-17 A | 2020-09-18 A | 20SS | 100% |  | 2020-09-17 | 2020-09-18 | 2d |  | DOCUMENTADOR | 16h | 16h | 168,000 | 168,000 | 168,000 |
| 23 | 1.1.1.2.11 | Entrega del documento técnico ingenieril fase de diseño | 1d? | 2020-09-21 A | 2020-09-21 A | 22 | 100% |  | 2020-09-21 | 2020-09-21 | 1d? |  | DOCUMENTADOR | 8h | 8h | 84,000 | 84,000 | 84,000 |
| 24 | 1.1.1.3 | **Desarrollo** | 18d? | 2020-09-22 A | 2020-10-15 A | 12 | 100% |  | 2020-09-22 | 2020-10-15 | 18d? |  |  | 240h | 240h | 4,447,920 | 3,913,520 | 4,447,920 |
| 25 | 1.1.1.3.1 | Desarrollar el código fuente frontend de la interfaz de usuario basado en el inicio de sesion | 3d | 2020-09-22 A | 2020-09-24 A |  | 100% |  | 2020-09-22 | 2020-09-23 | 2d |  | DISEÑADOR WEB | 24h | 24h | 307,200 | 204,800 | 307,200 |
| 26 | 1.1.1.3.2 | Desarrollar el código fuente frontend de la interfaz inial de usuario administrador | 1d | 2020-09-24 A | 2020-09-24 A | 25 | 100% |  | 2020-09-24 | 2020-09-24 | 1d |  | DISEÑADOR WEB | 8h | 8h | 102,400 | 102,400 | 102,400 |
| 27 | 1.1.1.3.3 | Desarrollo del código fuente frontend de la interfaz inicial del usuario administrador | 2d | 2020-09-29 A | 2020-09-30 A | 28 | 100% |  | 2020-09-29 | 2020-09-30 | 2d |  | DISEÑADOR WEB | 16h | 16h | 204,800 | 204,800 | 204,800 |
| 28 | 1.1.1.3.4 | Desarrollo del código fuente backend de la historia de usuario inicio de sesion | 2d | 2020-09-25 A | 2020-09-28 A | 26 | 100% |  | 2020-09-25 | 2020-09-28 | 2d |  | DESARROLLADOR SENIOR; DESARROLLADOR WEB SENIOR | 32h | 32h | 726,400 | 726,400 | 726,400 |
| 29 | 1.1.1.3.5 | Realizar pruebas unitarias al código fuente de la historia de usuario inicio de sesion | 2d? | 2020-09-29 A | 2020-09-30 A | 28 | 100% |  | 2020-09-29 | 2020-09-29 | 1d? |  | DESARROLLADOR SENIOR; INGENIERO DE PRUEBAS | 32h | 32h | 659,200 | 329,600 | 659,200 |
| 30 | 1.1.1.3.6 | Desarrollar el código fuente frontend de la interfaz de usuario basado en CRUD de vendedores | 1d | 2020-09-30 A | 2020-09-30 A | 29 | 100% |  | 2020-09-30 | 2020-09-30 | 1d |  | ARQUITECTO DE SOFTWARE | 8h | 8h | 311,200 | 311,200 | 311,200 |
| 31 | 1.1.1.3.7 | Desarrollo del código fuente backend de la historia de usuario CRUD de vendedores | 2d | 2020-10-01 A | 2020-10-02 A | 30 | 100% |  | 2020-10-01 | 2020-10-02 | 2d |  | DESARROLLADOR SENIOR; DESARROLLADOR WEB SENIOR | 32h | 32h | 726,400 | 726,400 | 726,400 |
| 32 | 1.1.1.3.8 | Realizar pruebas unitarias al código fuente de la historia de usuario CRUD de vendedores | 1d | 2020-10-05 A | 2020-10-05 A | 31 | 100% |  | 2020-10-05 | 2020-10-05 | 1d |  | INGENIERO DE PRUEBAS | 8h | 8h | 124,000 | 124,000 | 124,000 |
| 33 | 1.1.1.3.9 | Desarrollar el código fuente frontend de la interfaz de usuario basado en CRUD de proveedores | 1d | 2020-10-06 A | 2020-10-06 A | 32 | 100% |  | 2020-10-06 | 2020-10-06 | 1d |  | DISEÑADOR WEB | 8h | 8h | 102,400 | 102,400 | 102,400 |
| 34 | 1.1.1.3.10 | Desarrollo del código fuente backend de la historia de usuario CRUD de proveedores | 2d | 2020-10-07 A | 2020-10-08 A | 33 | 100% |  | 2020-10-07 | 2020-10-08 | 2d |  | DESARROLLADOR WEB SENIOR | 16h | 16h | 315,200 | 315,200 | 315,200 |
| 35 | 1.1.1.3.11 | Realizar pruebas unitarias al código fuente de la historia de usuario CRUD de proveedores | 1d | 2020-10-09 A | 2020-10-09 A | 34 | 100% |  | 2020-10-09 | 2020-10-09 | 1d |  | INGENIERO DE PRUEBAS | 8h | 8h | 124,000 | 124,000 | 124,000 |
| 36 | 1.1.1.3.12 | Desarrollar el código fuente frontend de la interfaz de usuario basado en CONTROL de inventario | 2d | 2020-10-12 A | 2020-10-13 A | 35 | 100% |  | 2020-10-12 | 2020-10-12 | 1d |  | DISEÑADOR WEB | 16h | 16h | 204,800 | 102,400 | 204,800 |
| 37 | 1.1.1.3.13 | Desarrollo del código fuente backend de la historia de usuario CONTROL de inventario | 2d | 2020-10-13 A | 2020-10-14 A | 36 | 100% |  | 2020-10-13 | 2020-10-14 | 2d |  | DESARROLLADOR WEB SENIOR | 16h | 16h | 315,200 | 315,200 | 315,200 |
| 38 | 1.1.1.3.14 | Realizar pruebas unitarias al código fuente de la historia de usuario CONTROL de inventario | 1d? | 2020-10-15 A | 2020-10-15 A | 37 | 100% |  | 2020-10-15 | 2020-10-15 | 1d? |  | INGENIERO ANALISTA 2; INGENIERO DE PRUEBAS | 16h | 16h | 224,720 | 224,720 | 224,720 |

| ID | WBS | Task | Duration | Start | Finish | Predecessors | Complete | Baseline start | Baseline finish | Baseline duration | Resources | Work | Actual work | Cost | Baseline cost | Actual cost |
| --- | --- | --- | --- | --- | --- | --- | --- | --- | --- | --- | --- | --- | --- | --- | --- | --- |
| 39 | 1.1.1.4 | **Pruebas** | 4d? | 2020-10-16 A | 2020-10-21 A | 24 | 100% | 2020-10-16 | 2020-10-20 | 3d? |  | 96h | 96h | 2,239,744 | 1,626,264 | 2,239,744 |
| 40 | 1.1.1.4.1 | Agendar reuniones con el cliente sobre actividades en pruebas de funcionalidad | 1d? | 2020-10-16 A | 2020-10-16 A |  | 100% | 2020-10-16 | 2020-10-16 | 1d? | GERENTE DEL PROYECTO | 8h | 8h | 324,792 | 324,792 | 324,792 |
| 41 | 1.1.1.4.2 | Realizar pruebas de aceptacion por el cliente | 2d? | 2020-10-19 A | 2020-10-20 A | 40 | 100% | 2020-10-19 | 2020-10-19 | 1d? | INGENIERO ANALISTA; INGENIERO DE PRUEBAS | 32h | 32h | 810,960 | 405,480 | 810,960 |
| 42 | 1.1.1.4.3 | Realizar correcciones de acuerdo a los resultados obtenidos en las pruebas por el cliente | 1d? | 2020-10-19 A | 2020-10-19 A | 40 | 100% | 2020-10-19 | 2020-10-19 | 1d? | DESARROLLADOR SENIOR; DESARROLLADOR WEB SENIOR | 16h | 16h | 363,200 | 363,200 | 363,200 |
| 43 | 1.1.1.4.4 | Elaborar un informe sobre los resultados obtenidos en las pruebas | 2d? | 2020-10-20 A | 2020-10-21 A | 41 | 100% | 2020-10-20 | 2020-10-20 | 1d? | INGENIERO DE PRUEBAS; DOCUMENTADOR | 32h | 32h | 416,000 | 208,000 | 416,000 |
| 44 | 1.1.1.4.5 | Entregar el documento tecnico sobre los resultados de las pruebas al cliente | 1d? | 2020-10-20 A | 2020-10-20 A | 41 | 100% | 2020-10-20 | 2020-10-20 | 1d? | GERENTE DEL PROYECTO | 8h | 8h | 324,792 | 324,792 | 324,792 |
| 45 | 1.1.2 | **SE2. Modulo vendedor** | 21d? | 2020-10-21 A | 2020-11-18 A | 3 | 100% | 2020-10-21 | 2020-11-18 | 21d? |  | 416h | 416h | 9,717,136 | 7,992,752 | 9,717,136 |
| 46 | 1.1.2.1 | **Analisis** | 3d? | 2020-10-21 A | 2020-10-23 A |  | 100% | 2020-10-21 | 2020-10-23 | 3d? |  | 88h | 88h | 1,807,392 | 1,341,192 | 1,807,392 |
| 47 | 1.1.2.1.1 | Agendar reunión con el stakeholder | 1d | 2020-10-21 A | 2020-10-21 A |  | 100% | 2020-10-21 | 2020-10-21 | 1d | GERENTE DEL PROYECTO | 8h | 8h | 324,792 | 324,792 | 324,792 |
| 48 | 1.1.2.1.2 | Elaborar el documento de la fase de análisis del modulo de vendedor | 3d | 2020-10-21 A | 2020-10-23 A | 47SS | 100% | 2020-10-21 | 2020-10-22 | 2d | DOCUMENTADOR; INGENIERO ANALISTA; INGENIERO ANALISTA 2 | 72h | 72h | 1,398,600 | 932,400 | 1,398,600 |
| 49 | 1.1.2.1.3 | Entrega del documento de la fase de análisis del modulo vendedor | 1d? | 2020-10-23 A | 2020-10-23 A | 48 | 100% | 2020-10-23 | 2020-10-23 | 1d? | DOCUMENTADOR | 8h | 8h | 84,000 | 84,000 | 84,000 |
| 50 | 1.1.2.2 | **Diseño** | 5d? | 2020-10-26 A | 2020-10-30 A | 46 | 100% | 2020-10-26 | 2020-10-30 | 5d? |  | 120h | 120h | 3,116,176 | 2,306,784 | 3,116,176 |
| 51 | 1.1.2.2.1 | Agendar reunión con el stakeholder | 1d? | 2020-10-26 A | 2020-10-26 A |  | 100% | 2020-10-26 | 2020-10-26 | 1d? | GERENTE DEL PROYECTO | 8h | 8h | 324,792 | 324,792 | 324,792 |
| 52 | 1.1.2.2.2 | Realizar el mapa de navegacion de la aplicación | 2d? | 2020-10-26 A | 2020-10-27 A | 51SS | 100% | 2020-10-26 | 2020-10-26 | 1d? | DISEÑADOR WEB; INGENIERO ANALISTA | 32h | 32h | 767,760 | 383,880 | 767,760 |
| 53 | 1.1.2.2.3 | Diseñar mockups del modulo de usuario | 1d? | 2020-10-27 A | 2020-10-27 A | 52 | 100% | 2020-10-27 | 2020-10-27 | 1d? | ARQUITECTO DE SOFTWARE; INGENIERO ANALISTA | 16h | 16h | 592,680 | 592,680 | 592,680 |
| 54 | 1.1.2.2.4 | Validacion de los mockups | 2d? | 2020-10-28 A | 2020-10-29 A | 53 | 100% | 2020-10-28 | 2020-10-28 | 1d? | GERENTE DEL PROYECTO; INGENIERO ANALISTA 2 | 32h | 32h | 851,024 | 425,512 | 851,024 |
| 55 | 1.1.2.2.5 | Realizar documento técnico Ingenieril fase diseño | 1d? | 2020-10-29 A | 2020-10-29 A | 54 | 100% | 2020-10-29 | 2020-10-29 | 1d? | DOCUMENTADOR; INGENIERO ANALISTA 2 | 16h | 16h | 184,720 | 184,720 | 184,720 |
| 56 | 1.1.2.2.6 | Entrega del documento técnico ingenieril fase de diseño del modulo de reporte | 1d? | 2020-10-30 A | 2020-10-30 A | 55 | 100% | 2020-10-30 | 2020-10-30 | 1d? | ARQUITECTO DE SOFTWARE; DOCUMENTADOR | 16h | 16h | 395,200 | 395,200 | 395,200 |
| 57 | 1.1.2.3 | **Desarrollo** | 9d? | 2020-11-02 A | 2020-11-12 A | 50 | 100% | 2020-11-02 | 2020-11-12 | 9d? |  | 128h | 128h | 2,675,200 | 2,675,200 | 2,675,200 |
| 58 | 1.1.2.3.1 | Desarrollar el código fuente frontend de la interfaz de usuario basado en CRUD de clientes | 1d? | 2020-11-02 A | 2020-11-02 A |  | 100% | 2020-11-02 | 2020-11-02 | 1d? | ARQUITECTO DE SOFTWARE; DISEÑADOR WEB | 16h | 16h | 413,600 | 413,600 | 413,600 |
| 59 | 1.1.2.3.2 | Desarrollo del código fuente backend de la historia de usuario CRUD de clientes | 2d | 2020-11-03 A | 2020-11-04 A | 58 | 100% | 2020-11-03 | 2020-11-04 | 2d | DESARROLLADOR SENIOR | 16h | 16h | 411,200 | 411,200 | 411,200 |
| 60 | 1.1.2.3.3 | Realizar pruebas unitarias al código fuente de la historia de usuario CRUD de clientes | 1d? | 2020-11-05 A | 2020-11-05 A | 59 | 100% | 2020-11-05 | 2020-11-05 | 1d? | DISEÑADOR WEB; INGENIERO DE PRUEBAS | 16h | 16h | 226,400 | 226,400 | 226,400 |
| 61 | 1.1.2.3.4 | Desarrollar el código fuente frontend de la interfaz de usuario basado en SECCION de ventas | 1d? | 2020-11-06 A | 2020-11-06 A | 60 | 100% | 2020-11-06 | 2020-11-06 | 1d? | DESARROLLADOR SENIOR; DISEÑADOR WEB | 16h | 16h | 308,000 | 308,000 | 308,000 |
| 62 | 1.1.2.3.5 | Desarrollo del código fuente backend de la historia de usuario SECCION de ventas | 2d | 2020-11-09 A | 2020-11-10 A | 61 | 100% | 2020-11-09 | 2020-11-10 | 2d | DESARROLLADOR SENIOR; DESARROLLADOR WEB SENIOR | 32h | 32h | 726,400 | 726,400 | 726,400 |
| 63 | 1.1.2.3.6 | Realizar pruebas unitarias al código fuente de la historia de usuario de SECCION de ventas | 1d? | 2020-11-11 A | 2020-11-11 A | 62 | 100% | 2020-11-11 | 2020-11-11 | 1d? | DISEÑADOR WEB; INGENIERO DE PRUEBAS | 16h | 16h | 226,400 | 226,400 | 226,400 |
| 64 | 1.1.2.3.7 | Entregar codigo fuente | 1d? | 2020-11-12 A | 2020-11-12 A | 63 | 100% | 2020-11-12 | 2020-11-12 | 1d? | DESARROLLADOR SENIOR; DESARROLLADOR WEB SENIOR | 16h | 16h | 363,200 | 363,200 | 363,200 |

| ID | WBS | Task | Duration | Start | Finish | Predecessors | Complete | Remaining | Baseline start | Baseline finish | Baseline duration | Total slack | Resources | Work | Actual work | Cost | Baseline cost | Actual cost |
| --- | --- | --- | --- | --- | --- | --- | --- | --- | --- | --- | --- | --- | --- | --- | --- | --- | --- | --- |
| 65 | 1.1.2.4 | **Pruebas** | 4d? | 2020-11-13 A | 2020-11-18 A | 57 | 100% |  | 2020-11-13 | 2020-11-18 | 4d? |  |  | 80h | 80h | 2,118,368 | 1,669,576 | 2,118,368 |
| 66 | 1.1.2.4.1 | Agendar reuniones con el cliente sobre actividades en pruebas de funcionalidad | 1d? | 2020-11-13 A | 2020-11-13 A |  | 100% |  | 2020-11-13 | 2020-11-13 | 1d? |  | GERENTE DEL PROYECTO | 8h | 8h | 324,792 | 324,792 | 324,792 |
| 67 | 1.1.2.4.2 | Realizar pruebas de aceptacion por el cliente | 2d? | 2020-11-16 A | 2020-11-17 A | 66 | 100% |  | 2020-11-16 | 2020-11-16 | 1d? |  | GERENTE DEL PROYECTO; INGENIERO DE PRUEBAS | 32h | 32h | 897,584 | 448,792 | 897,584 |
| 68 | 1.1.2.4.3 | Realizar correcciones de acuerdo a los resultados obtenidos en las pruebas por el cliente | 1d? | 2020-11-17 A | 2020-11-17 A | 67 | 100% |  | 2020-11-17 | 2020-11-17 | 1d? |  | DESARROLLADOR SENIOR; DESARROLLADOR WEB SENIOR | 16h | 16h | 363,200 | 363,200 | 363,200 |
| 69 | 1.1.2.4.4 | Elaborar un informe sobre los resultados obtenidos en las pruebas | 1d? | 2020-11-18 A | 2020-11-18 A | 68 | 100% |  | 2020-11-18 | 2020-11-18 | 1d? |  | DOCUMENTADOR; INGENIERO DE PRUEBAS | 16h | 16h | 208,000 | 208,000 | 208,000 |
| 70 | 1.1.2.4.5 | Entregar el documento tecnico sobre los resultados de las pruebas al cliente | 1d? | 2020-11-18 A | 2020-11-18 A | 69SS | 100% |  | 2020-11-18 | 2020-11-18 | 1d? |  | GERENTE DEL PROYECTO | 8h | 8h | 324,792 | 324,792 | 324,792 |
| 71 | 1.2 | **E2. Un (1) Aplicativo web implementado en un servidor hosting Aplicativo web para la administración de las ventas y control inventario de la bodega TRIDISAR** | 5d? | 2020-11-19 A | 2020-11-25 A | 2 | 100% |  | 2020-11-19 | 2020-11-25 | 5d? |  |  | 48h | 48h | 1,127,192 | 1,127,192 | 1,127,192 |
| 72 | 1.2.1 | Planificar reunion para planificar el proceso de entrega del hosting y el dominio | 1d? | 2020-11-19 A | 2020-11-19 A |  | 100% |  | 2020-11-19 | 2020-11-19 | 1d? |  | GERENTE DEL PROYECTO | 8h | 8h | 324,792 | 324,792 | 324,792 |
| 73 | 1.2.2 | Configuracion del hosting y dominio | 2d | 2020-11-20 A | 2020-11-23 A | 72 | 100% |  | 2020-11-20 | 2020-11-23 | 2d |  | DESARROLLADOR WEB SENIOR | 16h | 16h | 315,200 | 315,200 | 315,200 |
| 74 | 1.2.3 | Subida del aplicativo web al hosting | 1d? | 2020-11-24 A | 2020-11-24 A | 73 | 100% |  | 2020-11-24 | 2020-11-24 | 1d? |  | DESARROLLADOR SENIOR; DESARROLLADOR WEB SENIOR | 16h | 16h | 363,200 | 363,200 | 363,200 |
| 75 | 1.2.4 | Realizacion de pruebas para el correcto funcionamiento del aplicativo en el hosting | 1d? | 2020-11-25 A | 2020-11-25 A | 74 | 100% |  | 2020-11-25 | 2020-11-25 | 1d? |  | INGENIERO DE PRUEBAS | 8h | 8h | 124,000 | 124,000 | 124,000 |
| 76 | 1.3 | **E3.Tres (3) personas capacitadas en el manejo de la plataforma web durante dos (2) horas diarias por tres (3) dias** | 10d? | 2020-11-26 A | 2020-12-09 | 71 | 70% | 3d? | 2020-11-26 | 2020-12-09 | 10d? | 0d |  | 160h | 112h | 2,291,976 | 2,291,976 | 1,796,776 |
| 77 | 1.3.1 | Preparacion de la capacitación | 3d | 2020-11-26 A | 2020-11-30 A |  | 100% |  | 2020-11-26 | 2020-11-30 | 3d |  | GERENTE DEL PROYECTO; PROFESIONAL CAPACITACION | 48h | 48h | 974,376 | 974,376 | 974,376 |
| 78 | 1.3.2 | Diseño de la capacitacion | 2d | 2020-12-01 A | 2020-12-02 A | 77 | 100% |  | 2020-12-01 | 2020-12-02 | 2d |  | DESARROLLADOR SENIOR; PROFESIONAL CAPACITACION | 32h | 32h | 411,200 | 411,200 | 411,200 |
| 79 | 1.3.3 | Ejecutar la capacitacion | 4d | 2020-12-03 A | 2020-12-08 | 78 | 50% | 2d | 2020-12-03 | 2020-12-08 | 4d | 0d | DESARROLLADOR SENIOR; PROFESIONAL CAPACITACION | 64h | 32h | 822,400 | 822,400 | 411,200 |
| 80 | 1.3.4 | Acta de validacion de la capacitacion | 1d? | 2020-12-09 | 2020-12-09 | 79 |  |  | 2020-12-09 | 2020-12-09 | 1d? | 0d | DOCUMENTADOR; PROFESIONAL CAPACITACION | 16h |  | 84,000 | 84,000 |  |
